# Plan UPEDU

Schedule from MS Project, 2008-11-03 to 2009-02-09, 2 hours a day.

## Calendars

- Estándar: Mon-Fri 17:00-19:00; Sat 11:00-13:00; Sun off. Exceptions (off unless hours are given): 2008-12-08, 2008-12-24 to 2008-12-25, 2008-12-31 to 2009-01-01, 2009-01-06.

## Resources

| Resource |
| --- |
| Gestor proyecto |
| Analista |
| Revisor |
| Ingeniero de pruebas |
| Ingeniero bases de datos |
| Diseñador software |
| Programador |
| Gestor configuraciones |

## Schedule

| ID | WBS | Task | Type | Duration | Start | Finish | Predecessors | Baseline start | Baseline finish | Baseline duration | Total slack | Free slack | Constraint | Resources | Work |
| --- | --- | --- | --- | --- | --- | --- | --- | --- | --- | --- | --- | --- | --- | --- | --- |
| 1 | 1 | **Inicio** |  | 20d | 2008-11-03 | 2008-11-25 |  | 2008-11-03 | 2008-11-25 | 20d | 3d |  |  |  | 124h |
| 2 | 1.1 | Análisis inicial de requisitos |  | 2d | 2008-11-03 | 2008-11-04 |  | 2008-11-03 | 2008-11-04 | 2d | 3d | 0d |  | Analista [400%] | 16h |
| 3 | 1.2 | **General** |  | 10d | 2008-11-05 | 2008-11-15 |  | 2008-11-05 | 2008-11-15 | 10d | 9d |  |  |  | 60h |
| 4 | 1.2.1 | Escribir/actualizar SRS |  | 5d | 2008-11-05 | 2008-11-10 | 2 | 2008-11-05 | 2008-11-10 | 5d | 9d | 0d |  | Analista [300%] | 30h |
| 5 | 1.2.2 | Escribir/actualizar CU |  | 5d | 2008-11-11 | 2008-11-15 | 4 | 2008-11-11 | 2008-11-15 | 5d | 9d | 6d |  | Analista [300%] | 30h |
| 6 | 1.3 | **Gestión** |  | 16d | 2008-11-05 | 2008-11-22 |  | 2008-11-05 | 2008-11-22 | 16d | 3d |  |  |  | 44h |
| 7 | 1.3.1 | Visión Inicial |  | 5d | 2008-11-05 | 2008-11-10 | 2 | 2008-11-05 | 2008-11-10 | 5d | 3d | 0d |  | Gestor proyecto | 10h |
| 8 | 1.3.2 | Plan de iteración |  | 5d | 2008-11-11 | 2008-11-15 | 7 | 2008-11-11 | 2008-11-15 | 5d | 3d | 0d |  | Gestor proyecto | 10h |
| 9 | 1.3.3 | Gestión de Riesgos |  | 2d | 2008-11-11 | 2008-11-12 | 7 | 2008-11-11 | 2008-11-12 | 2d | 6d | 3d |  | Gestor proyecto | 4h |
| 10 | 1.3.4 | Plan de Configuraciones |  | 2d | 2008-11-11 | 2008-11-12 | 7 | 2008-11-11 | 2008-11-12 | 2d | 6d | 3d |  | Gestor proyecto | 4h |
| 11 | 1.3.5 | Plan de mediciones |  | 2d | 2008-11-11 | 2008-11-12 | 7 | 2008-11-11 | 2008-11-12 | 2d | 6d | 3d |  | Gestor proyecto | 4h |
| 12 | 1.3.6 | Plan de desarrollo (SPMP) |  | 6d | 2008-11-17 | 2008-11-22 | 11, 7, 8, 9, 10 | 2008-11-17 | 2008-11-22 | 6d | 3d | 0d |  | Gestor proyecto | 12h |
| 13 | 1.4 | **Revisión** |  | 2d | 2008-11-24 | 2008-11-25 |  | 2008-11-24 | 2008-11-25 | 2d | 3d |  |  |  | 4h |
| 14 | 1.4.1 | Revisión artefactos |  | 2d | 2008-11-24 | 2008-11-25 | 12, 5 | 2008-11-24 | 2008-11-25 | 2d | 3d | 0d |  | Revisor [50%]; Gestor configuraciones [50%] | 4h |
| 15 | 2 | Entrega Plan Proyecto | milestone | 0d | 2008-11-25 | 2008-11-25 | 14 | 2008-11-25 | 2008-11-25 | 0d | 3d | 0d | finish no later than 2008-12-09 |  |  |
| 16 | 3 | **Elaboración** |  | 17d | 2008-11-26 | 2008-12-16 |  | 2008-11-26 | 2008-12-16 | 17d | 3d |  |  |  | 118h |
| 17 | 3.1 | **General** |  | 15d | 2008-11-26 | 2008-12-13 |  | 2008-11-26 | 2008-12-13 | 15d | 3d |  |  |  | 108h |
| 18 | 3.1.1 | Completar Casos de Uso |  | 2d | 2008-11-26 | 2008-11-27 | 15 | 2008-11-26 | 2008-11-27 | 2d | 3d | 0d |  | Analista [400%] | 16h |
| 19 | 3.1.2 | Detallar CU |  | 5d | 2008-11-28 | 2008-12-03 | 18 | 2008-11-28 | 2008-12-03 | 5d | 3d | 0d |  | Analista [400%] | 40h |
| 20 | 3.1.3 | Modelo estático análisis |  | 2d | 2008-12-04 | 2008-12-05 | 19 | 2008-12-04 | 2008-12-05 | 2d | 3d | 0d |  | Analista [400%] | 16h |
| 21 | 3.1.4 | Modelo dinámico análisis |  | 5d | 2008-12-06 | 2008-12-12 | 20 | 2008-12-06 | 2008-12-12 | 5d | 3d | 0d |  | Analista [300%] | 30h |
| 22 | 3.1.5 | Análisis de la arquitectura |  | 2d | 2008-12-06 | 2008-12-09 | 20 | 2008-12-06 | 2008-12-09 | 2d | 6d | 3d |  | Analista | 4h |
| 23 | 3.1.6 | Especificaciones suplementarias |  | 1d | 2008-12-13 | 2008-12-13 | 22, 21 | 2008-12-13 | 2008-12-13 | 1d | 3d | 0d |  | Analista | 2h |
| 24 | 3.2 | **Gestión** |  | 1d | 2008-12-13 | 2008-12-13 |  | 2008-12-13 | 2008-12-13 | 1d | 3d |  |  |  | 2h |
| 25 | 3.2.1 | Actualizar plan de iteración |  | 1d | 2008-12-13 | 2008-12-13 | 22, 21 | 2008-12-13 | 2008-12-13 | 1d | 3d | 0d |  | Gestor proyecto [50%]; Gestor configuraciones [50%] | 2h |

| ID | WBS | Task | Type | Duration | Start | Finish | Predecessors | Baseline start | Baseline finish | Baseline duration | Total slack | Free slack | Constraint | Resources | Work |
| --- | --- | --- | --- | --- | --- | --- | --- | --- | --- | --- | --- | --- | --- | --- | --- |
| 26 | 3.3 | **Revisión** |  | 2d | 2008-12-15 | 2008-12-16 |  | 2008-12-15 | 2008-12-16 | 2d | 3d |  |  |  | 8h |
| 27 | 3.3.1 | Revision semanal |  | 2d | 2008-12-15 | 2008-12-16 | 25, 23 | 2008-12-15 | 2008-12-16 | 2d | 43d |  |  | Revisor [75%]; Gestor configuraciones [75%] | 6h |
| 28 | 3.3.2 | Revisión Lista de Riesgos |  | 1d | 2008-12-15 | 2008-12-15 | 25, 23 | 2008-12-15 | 2008-12-15 | 1d | 3d | 0d |  | Revisor [50%]; Gestor configuraciones [50%] | 2h |
| 29 | 4 | Especificación de Arquitectura | milestone | 0d | 2008-12-15 | 2008-12-15 | 28 | 2008-12-15 | 2008-12-15 | 0d | 3d | 0d |  |  |  |
| 30 | 5 | **Construcción** |  | 35d | 2008-12-16 | 2009-01-30 |  | 2008-12-16 | 2009-01-19 | 25d | 3d |  |  |  | 229.6h |
| 31 | 5.1 | **Construcción1** |  | 16.5d | 2008-12-16 | 2009-01-09 |  | 2008-12-16 | 2009-01-02 | 12d | 3d |  |  |  | 101h |
| 32 | 5.1.1 | **General** |  | 10d | 2008-12-16 | 2008-12-29 |  | 2008-12-16 | 2008-12-23 | 7d | 3d |  |  |  | 44h |
| 33 | 5.1.1.1 | Actualizar especificación |  | 1d | 2008-12-16 | 2008-12-16 | 29 | 2008-12-16 | 2008-12-16 | 1d | 3d | 0d |  | Analista [300%] | 6h |
| 34 | 5.1.1.2 | Actualizar y completar análisis |  | 1d | 2008-12-17 | 2008-12-17 | 33 | 2008-12-17 | 2008-12-17 | 1d | 3d | 0d |  | Analista [300%] | 6h |
| 35 | 5.1.1.3 | Diseño arquitectónico |  | 3d | 2008-12-18 | 2008-12-20 | 34 | 2008-12-18 | 2008-12-20 | 3d | 5d |  |  | Diseñador software | 6h |
| 36 | 5.1.1.4 | Diseño detallado |  | 5d | 2008-12-18 | 2008-12-23 | 34 | 2008-12-18 | 2008-12-23 | 5d | 3d |  |  | Diseñador software | 10h |
| 37 | 5.1.1.5 | Diseño base de datos |  | 5d | 2008-12-22 | 2008-12-29 |  | 2008-12-18 | 2008-12-23 | 5d | 0d |  | start no earlier than 2008-12-20 | Ingeniero bases de datos | 10h |
| 38 | 5.1.1.6 | Escribir Plan de pruebas |  | 3d | 2008-12-18 | 2008-12-20 | 34 | 2008-12-18 | 2008-12-20 | 3d | 39d |  |  | Ingeniero de pruebas | 6h |
| 39 | 5.1.2 | **Implementación** |  | 15.5d | 2008-12-17 | 2009-01-09 |  | 2008-12-17 | 2009-01-02 | 11d | 9d |  |  |  | 41h |
| 40 | 5.1.2.1 | Desarrollo de funcionalidad principal |  | 5d | 2008-12-30 | 2009-01-07 | 36, 35, 37, 34 | 2008-12-26 | 2009-01-02 | 5d | 0d |  | start no earlier than 2008-12-26 | Programador [200%] | 20h |
| 41 | 5.1.2.2 | Desarrollo GUI |  | 1d | 2008-12-17 | 2008-12-17 | 33 | 2008-12-17 | 2008-12-17 | 1d | 42d |  |  | Programador | 2h |
| 42 | 5.1.2.3 | Desarrollo base de datos |  | 3d | 2009-01-02 | 2009-01-05 |  | 2008-12-26 | 2008-12-29 | 3d | 30d |  | start no earlier than 2009-01-02 | Programador [200%] | 12h |
| 43 | 5.1.2.4 | Pruebas de código iniciales |  | 3.5d | 2009-01-05 | 2009-01-09 | 40FS-4% | 2008-12-30 | 2008-12-30 | 1d | 27.5d |  | start no earlier than 2009-01-04 | Ingeniero de pruebas | 7h |
| 44 | 5.1.3 | **Gestión** |  | 1d | 2008-12-17 | 2008-12-17 |  | 2008-12-17 | 2008-12-17 | 1d | 41d |  |  |  | 4h |
| 45 | 5.1.3.1 | Actualizar plan de iteracion |  | 1d | 2008-12-17 | 2008-12-17 | 33 | 2008-12-17 | 2008-12-17 | 1d | 42d |  |  | Gestor proyecto; Gestor configuraciones | 4h |
| 46 | 5.1.4 | **Revisión** |  | 5d | 2008-12-30 | 2009-01-07 |  | 2008-12-26 | 2009-01-02 | 5d | 0d |  |  |  | 12h |
| 47 | 5.1.4.1 | Revisión semanal |  | 1d | 2008-12-30 | 2008-12-30 | 36, 35, 37, 34 | 2008-12-26 | 2008-12-26 | 1d | 4d |  |  | Revisor; Gestor configuraciones | 4h |
| 48 | 5.1.4.2 | Revisión de código |  | 2d | 2009-01-05 | 2009-01-07 | 40FS-4% | 2008-12-30 | 2009-01-02 | 2d | 0d |  |  | Revisor; Gestor configuraciones | 8h |
| 49 | 5.2 | Versión ALFA | milestone | 0d | 2009-01-07 | 2009-01-07 | 48, 47 | 2009-01-02 | 2009-01-02 | 0d | 0d |  |  |  |  |

| ID | WBS | Task | Type | Duration | Start | Finish | Predecessors | Baseline start | Baseline finish | Baseline duration | Total slack | Free slack | Resources | Work |
| --- | --- | --- | --- | --- | --- | --- | --- | --- | --- | --- | --- | --- | --- | --- |
| 50 | 5.3 | **Construcción2** |  | 20d | 2009-01-08 | 2009-01-30 |  | 2009-01-03 | 2009-01-19 | 13d | 0d |  |  | 128.6h |
| 51 | 5.3.1 | **General** |  | 4d | 2009-01-08 | 2009-01-12 |  | 2009-01-03 | 2009-01-08 | 4d | 0d |  |  | 28h |
| 52 | 5.3.1.1 | Diseño arquitectónico |  | 1d | 2009-01-08 | 2009-01-08 | 49 | 2009-01-03 | 2009-01-03 | 1d | 3d |  | Diseñador software | 2h |
| 53 | 5.3.1.2 | Diseño detallado |  | 4d | 2009-01-08 | 2009-01-12 | 49 | 2009-01-03 | 2009-01-08 | 4d | 0d |  | Diseñador software [200%] | 16h |
| 54 | 5.3.1.3 | Actualizar plan de pruebas |  | 2d | 2009-01-08 | 2009-01-09 | 49 | 2009-01-03 | 2009-01-05 | 2d | 17d | 2d | Ingeniero de pruebas [50%] | 2h |
| 55 | 5.3.1.4 | Escribir resultados de pruebas |  | 2d | 2009-01-08 | 2009-01-09 | 49 | 2009-01-03 | 2009-01-05 | 2d | 17d | 2d | Ingeniero de pruebas [50%] | 2h |
| 56 | 5.3.1.5 | Manual de usuario |  | 3d | 2009-01-08 | 2009-01-10 | 49 | 2009-01-03 | 2009-01-07 | 3d | 17d |  | Gestor proyecto | 6h |
| 57 | 5.3.2 | **Implementación** |  | 14.5d | 2009-01-13 | 2009-01-29 |  | 2009-01-09 | 2009-01-17 | 7.5d | 0d |  |  | 84.2h |
| 58 | 5.3.2.1 | Desarrollo de componentes |  | 12d | 2009-01-13 | 2009-01-26 | 53, 52 | 2009-01-09 | 2009-01-14 | 5d | 0d |  | Programador [300%] | 72h |
| 59 | 5.3.2.2 | Pruebas de la versión alfa |  | 4.1d | 2009-01-22 | 2009-01-27 | 58FS-3% | 2009-01-13 | 2009-01-15 | 2d | 10.5d | 0d | Ingeniero de pruebas | 8.2h |
| 60 | 5.3.2.3 | Pruebas de integración |  | 2d | 2009-01-27 | 2009-01-29 | 59 | 2009-01-15 | 2009-01-17 | 2d | 10.5d |  | Ingeniero de pruebas | 4h |
| 61 | 5.3.3 | **Gestión** |  | 1d | 2009-01-08 | 2009-01-08 |  | 2009-01-03 | 2009-01-03 | 1d | 27d |  |  | 4h |
| 62 | 5.3.3.1 | Actualizar plan de iteración |  | 1d | 2009-01-08 | 2009-01-08 | 49 | 2009-01-03 | 2009-01-03 | 1d | 28d |  | Gestor configuraciones; Gestor proyecto | 4h |
| 63 | 5.3.4 | **Revisión** |  | 16d | 2009-01-13 | 2009-01-30 |  | 2009-01-09 | 2009-01-19 | 9d | 0d |  |  | 12.4h |
| 64 | 5.3.4.1 | Revisión semanal |  | 1d | 2009-01-13 | 2009-01-13 | 52, 53, 54, 55 | 2009-01-09 | 2009-01-09 | 1d | 15d |  | Revisor [50%]; Gestor configuraciones [50%] | 2h |
| 65 | 5.3.4.2 | Revisión de código |  | 4d | 2009-01-27 | 2009-01-30 | 58 | 2009-01-15 | 2009-01-19 | 4d | 0d |  | Revisor [50%]; Ingeniero de pruebas [80%] | 10.4h |
| 66 | 5.4 | Versión BETA | milestone | 0d | 2009-01-30 | 2009-01-30 | 65, 58, 56, 64 | 2009-01-19 | 2009-01-19 | 0d | 0d |  |  |  |
| 67 | 6 | SEPROSO 1.0 | milestone | 0d | 2009-01-30 | 2009-01-30 | 66 | 2009-01-19 | 2009-01-19 | 0d | 4d | 0d |  |  |
| 68 | 7 | **Transición** |  | 8d | 2009-01-31 | 2009-02-09 |  | 2009-01-20 | 2009-01-29 | 9d | 0d |  |  | 42h |
| 69 | 7.1 | **General** |  | 5d | 2009-01-31 | 2009-02-05 |  | 2009-01-20 | 2009-01-24 | 5d | 1d |  |  | 30h |
| 70 | 7.1.1 | Manual de Administrador |  | 2d | 2009-01-31 | 2009-02-02 | 67 | 2009-01-20 | 2009-01-21 | 2d | 4d |  | Gestor proyecto [200%] | 8h |
| 71 | 7.1.2 | Manual de Instalación |  | 2d | 2009-01-31 | 2009-02-02 | 67 | 2009-01-20 | 2009-01-21 | 2d | 4d |  | Gestor proyecto [200%] | 8h |
| 72 | 7.1.3 | Escribir resultados de pruebas |  | 1d | 2009-02-02 | 2009-02-02 | 75 | 2009-01-21 | 2009-01-21 | 1d | 0d |  | Ingeniero de pruebas | 2h |
| 73 | 7.1.4 | Completar documentación |  | 3d | 2009-02-03 | 2009-02-05 | 72 | 2009-01-22 | 2009-01-24 | 3d | 0d |  | Gestor proyecto [200%] | 12h |

| ID | WBS | Task | Type | Duration | Start | Finish | Predecessors | Baseline start | Baseline finish | Baseline duration | Total slack | Constraint | Resources | Work |
| --- | --- | --- | --- | --- | --- | --- | --- | --- | --- | --- | --- | --- | --- | --- |
| 74 | 7.2 | **Implementación** |  | 1d | 2009-01-31 | 2009-01-31 |  | 2009-01-20 | 2009-01-20 | 1d | 0d |  |  | 2h |
| 75 | 7.2.1 | Pruebas versión beta |  | 1d | 2009-01-31 | 2009-01-31 | 66 | 2009-01-20 | 2009-01-20 | 1d | 0d |  | Ingeniero de pruebas | 2h |
| 76 | 7.3 | **Gestión** |  | 1d | 2009-02-06 | 2009-02-06 | 73 | 2009-01-26 | 2009-01-26 | 1d | 0d |  |  | 2h |
| 77 | 7.3.1 | Actalizar plan de iteración |  | 1d | 2009-02-06 | 2009-02-06 | 67 | 2009-01-26 | 2009-01-26 | 1d | 0d |  | Gestor configuraciones [50%]; Gestor proyecto [50%] | 2h |
| 78 | 7.4 | **Revisión** |  | 2d | 2009-02-07 | 2009-02-09 | 77 | 2009-01-27 | 2009-01-29 | 3d | 0d |  |  | 8h |
| 79 | 7.4.1 | Revisión semanal |  | 2d | 2009-02-07 | 2009-02-09 | 71, 70, 73 | 2009-01-27 | 2009-01-29 | 3d | 0d |  | Revisor; Gestor configuraciones | 8h |
| 80 | 8 | Documentación completa | milestone | 0d | 2009-02-09 | 2009-02-09 | 79 | 2009-01-29 | 2009-01-29 | 0d | 0d |  |  |  |
| 81 | 9 | Entrega Práctica | milestone | 0d | 2009-02-09 | 2009-02-09 | 79 | 2009-01-29 | 2009-01-29 | 0d | 1d | finish no later than 2009-02-10 |  |  |
